# TrilinosRelease5

Schedule from MS Project, 2004-11-24 to 2005-03-07, scheduled back from the finish, A marks actual dates.
Sandia National Labs

## Calendars

- Standard: Mon-Fri 08:00-12:00, 13:00-17:00; Sat-Sun off. Exceptions (off unless hours are given): 2004-11-25 to 2004-11-26, 2004-12-24, 2004-12-27 to 2004-12-31, 2005-01-03.

## Schedule

| ID | WBS | Task | Type | Duration | Start | Finish | Predecessors | Complete | Constraint |
| --- | --- | --- | --- | --- | --- | --- | --- | --- | --- |
| 1 | 1 | Verify which packages are to be included in the release |  | 30min | 2004-11-24 A | 2004-12-02 A |  | 100% | finish no later than 2004-12-02 |
| 2 | 2 | Figure out which packages need to go through the copyright process |  | 30min | 2004-11-29 A | 2004-12-02 A | 1 | 100% | finish no later than 2004-12-02 |
| 3 | 3 | Complete copyright process for packages that are to be released and are not copyrighted |  | 33d | 2005-01-12 A | 2005-02-25 A | 2 | 100% | finish no later than 2005-02-25 |
| 4 | 4 | Do initial verification of builds on important platforms |  | 16d | 2005-01-04 A | 2005-01-25 A | 1 | 100% | finish no later than 2005-01-25 |
| 5 | 5 | Implement make check |  | 4d | 2004-12-13 A | 2004-12-16 A |  | 100% | finish no later than 2004-12-16 |
| 6 | 6 | Clarify and rework TSF package structure - not necessary for this release |  | 2d | 2004-12-08 A | 2004-12-09 A |  | 100% | finish no later than 2004-12-09 |
| 7 | 7 | Autotool Pliris |  | 38d | 2004-11-30 A | 2005-01-31 A |  | 100% | finish no later than 2005-01-31 |
| 8 | 8 | **Implement Software Quality Plan requirements** |  | 3d | 2005-01-27 A | 2005-01-31 A |  | 100% | as late as possible |
| 9 | 8.1 | Create SQP checklists for release |  | 3d | 2005-01-27 A | 2005-01-31 A |  | 100% | finish no later than 2005-02-05 |
| 10 | 9 | Packages need to support make dist |  | 3d | 2004-12-14 A | 2004-12-16 A |  | 100% | finish no later than 2004-12-16 |
| 11 | 10 | Send email about repository freeze |  | 480min | 2005-01-31 A | 2005-01-31 A |  | 100% | finish no later than 2005-01-31 |
| 12 | 11 | Freeze repository | milestone | 0d | 2005-02-01 A | 2005-02-01 A | 1, 4, 5, 7, 8SS, 9, 10, 11, 6 | 100% | start no later than 2005-02-01 |
| 13 | 12 | Create 5.0 release branch |  | 2.5h | 2005-02-01 A | 2005-02-01 A | 12 | 100% | finish no later than 2005-02-01 |
| 14 | 13 | Send note to dev list including name of release branch |  | 30min | 2005-02-01 A | 2005-02-01 A | 13 | 100% | must finish on 2005-02-01 |
| 15 | 14 | Sierra Verification testing |  | 19d | 2005-02-02 A | 2005-02-28 A | 14 | 100% | finish no later than 2005-02-11 |
| 16 | 15 | Alegra Verification testing |  | 20d | 2005-02-03 A | 2005-03-02 A | 14, 15SS+1d | 100% | finish no later than 2005-02-24 |
| 17 | 16 | Set up the Trilinos 5.0 website |  | 17.2d | 2005-02-02 A | 2005-02-25 A | 14 | 100% | finish no later than 2005-02-04 |
| 18 | 17 | Set up 5.0 test harness runs |  | 10d | 2005-02-03 A | 2005-02-16 A | 13 | 100% | finish no later than 2005-02-11 |
| 19 | 18 | Send request to developers for release notes |  | 30min | 2005-02-02 A | 2005-02-02 A | 14 | 100% | start no later than 2005-02-02 |
| 20 | 19 | Add release notes to repository, tarball and web |  | 33h | 2005-02-25 A | 2005-03-03 A | 19FS+3d, 17 | 100% | finish no later than 2005-02-25 |
| 21 | 20 | Send note to dev list to encourage package developers to send a note to their user lists about new release features |  | 480min | 2005-03-03 A | 2005-03-03 A | 15, 16 | 100% | finish no later than 2005-03-03 |
| 22 | 21 | Create preliminary version of distribution tarball |  | 136h | 2005-02-02 A | 2005-02-24 A | 13, 10 | 100% | finish no later than 2005-02-02 |
| 23 | 22 | Obtain permission for release from Project Leader |  | 26.5h | 2005-03-02 A | 2005-03-07 A | 22 | 100% | as late as possible |
| 24 | 23 | Regenerate tarball and post on 5.0 website |  | 8h | 2005-03-03 A | 2005-03-03 A | 15, 16, 23 | 100% | finish no later than 2005-03-03 |
| 25 | 24 | Announce release via Trilinos-Announce list | milestone | 480min | 2005-03-03 A | 2005-03-03 A | 24 | 100% | finish no later than 2005-03-03 |

Notes:
- 1: Send a note to dev list. Include a note about copyrighting. / amesos / anasazi (new) / aztecoo / belos (new) / didasko (new - copyright) / epetra / epetraext / ifpack / kokkos / komplex / loca (copyright) / meros (new) / ml / new_package / nox / pliris (new) / PyTrilinos (new - copyright) / teuchos / Thyra (new, copyright) / triutils
- 2: Contact developers as necessary / PyTrilinos / Didasko / Thyra - not until next release / Loca / archetypo?
- 3: Most of this is now out of my hands.
- 4: Built on Janus and QT, will do more after freeze
- 5: Won't implement for all packages before this release.
- 6: A meeting occured in which a new package name was selected for what is currently TSFCore and TSFExtended. Kevin L will be the project leader. / Per Ross B., the reworked TSF package will not be included in Release 5.
- 7: The compile process is a little more compilcatied than I thought. Some files need to be compiled 4 different ways for four different levels of precision.
- 10: Contact packages sequentially about verifying their portion of tarball for best results. / We will create the final tarball later, but the initial verification of make dist support is complete. Only a handful of changes were necessary.
- 18: Not all of the tests pass yet, but the inital 3 5.0 test harness platforms are now running (we didn't set up paunchy because we will be moving to a better machine).
